How a schedule from MS Project changed from version to version. A marks actual dates.

## Version 1 (saved 2019-05-03)

Note of the change: minor changes g.cliente

| ID | WBS | Task | Duration | Start | Finish | Predecessors | Total float | Constraint |
| --- | --- | --- | --- | --- | --- | --- | --- | --- |
| 1 | 1 | **Projeto MDS** | 49.61d | 2019-04-29 08:00 | 2019-06-11 08:02 |  | 0d |  |
| 2 | 1.1 | **Inicio Projeto** | 0.1d | 2019-04-29 08:00 | 2019-04-29 08:30 |  | 43.67d |  |
| 3 |  | Reunião Inicial | 30min | 2019-04-29 08:00 | 2019-04-29 08:30 |  | 43.67d |  |
| 4 | 1.2 | **Planeamento Projeto** | 5.83d | 2019-04-29 08:30 | 2019-05-02 14:40 |  | 43.67d |  |
| 5 | 1.2.1 | **Build Backlog** | 1.3d | 2019-04-29 08:30 | 2019-04-29 16:00 | 2 | 43.67d |  |
| 6 |  | Determinar Requerimentos do Cliente | 30min | 2019-04-29 08:30 | 2019-04-29 09:00 | 2 | 43.67d |  |
| 7 |  | Criar User Stories | 4h | 2019-04-29 09:00 | 2019-04-29 14:00 | 6 | 43.67d |  |
| 8 |  | Priorizar convenientemente User Stories | 2h | 2019-04-29 14:00 | 2019-04-29 16:00 | 7 | 43.67d |  |
| 9 |  | Definir o numero de Sprints | 10min | 2019-04-29 16:00 | 2019-04-29 16:10 | 5 | 43.67d |  |
| 10 |  | Definir Plano de Comunicação | 15min | 2019-04-29 16:10 | 2019-04-29 16:25 | 9 | 43.67d |  |
| 11 |  | Definir Metodologias de trabalho | 30min | 2019-04-29 16:25 | 2019-04-29 16:55 | 10 | 43.67d |  |
| 12 |  | Identificação dos Riscos do Projeto | 45min | 2019-04-29 16:55 | 2019-04-30 08:40 | 11 | 43.67d |  |
| 13 |  | Analise dos Riscos do Projeto | 30min | 2019-04-30 08:40 | 2019-04-30 09:10 | 12 | 43.67d |  |
| 14 |  | Possiveis soluções para os Riscos do Projeto | 30min | 2019-04-30 09:10 | 2019-04-30 09:40 | 13 | 43.67d |  |
| 15 |  | Relatorio de Planeamento | 4d | 2019-04-30 09:40 | 2019-05-02 14:40 | 5, 9, 10, 11, 12, 13, 14 | 43.67d |  |
| 16 |  | Relatorio de Especificacao de Requisitos | 4d | 2019-04-30 09:40 | 2019-05-02 14:40 | 5, 9, 10, 11, 12, 13, 14 | 43.67d |  |
| 17 | 1.3 | **Build Phase** | 41.4d | 2019-05-06 09:00 | 2019-06-10 17:00 |  |  |  |
| 18 |  | Weekly Scrum 1 | 30min | 2019-05-06 09:00 | 2019-05-06 09:30 |  | 18.79d | start no earlier than 2019-05-06 09:00 |
| 19 |  | Weekly Scrum 2 | 30min | 2019-05-13 11:00 | 2019-05-13 11:30 | 18 | 32.51d | start no earlier than 2019-05-13 11:00 |
| 20 |  | Weekly Scrum 3 | 30min | 2019-05-20 08:00 | 2019-05-20 08:30 | 19 | 25.21d | start no earlier than 2019-05-20 08:00 |
| 21 |  | Weekly Scrum 4 | 30min | 2019-05-27 08:00 | 2019-05-27 08:30 | 20 | 17.31d | start no earlier than 2019-05-27 08:00 |
| 22 |  | Weekly Scrum 5 | 30min | 2019-06-03 08:00 | 2019-06-03 08:30 | 21 | 9.41d | start no earlier than 2019-06-03 08:00 |
| 23 |  | Weekly Scrum 6 | 30min | 2019-06-10 08:00 | 2019-06-10 08:30 | 22 | 1.51d | start no earlier than 2019-06-10 08:00 |
| 24 | 1.3.7 | **Sprint 1 - Dia 05/05 até 27/05** | 12.91d | 2019-05-06 09:30 | 2019-05-16 10:02 |  | 18.59d |  |
| 25 |  | Planeamento da Sprint | 2h | 2019-05-06 09:30 | 2019-05-06 11:30 | 18 | 18.79d |  |
| 26 | 1.3.7.2 | **User Story 1 - Entity Framework** | 2d | 2019-05-06 11:30 | 2019-05-07 14:30 |  | 18.79d |  |
| 27 |  | Criação das Classes com a Entity Framework | 1.5d | 2019-05-06 11:30 | 2019-05-07 11:00 | 25 | 18.79d |  |
| 28 |  | Ligação das Classes entre Si | 0.5d | 2019-05-07 11:00 | 2019-05-07 14:30 | 27 | 18.79d |  |
| 29 | 1.3.7.3 | **User Story 2 - Form Menu_Inicial** | 1.8d | 2019-05-07 14:30 | 2019-05-08 15:30 |  | 18.79d |  |
| 30 |  | Criação do Form | 30min | 2019-05-07 14:30 | 2019-05-07 15:00 | 26 | 18.79d |  |
| 31 |  | Criação do UI | 1h | 2019-05-07 15:00 | 2019-05-07 16:00 | 30 | 18.79d |  |
| 32 |  | Implementar Codigo Necessário Para Transição de Forms | 1d | 2019-05-07 16:00 | 2019-05-08 12:00 | 31 | 18.79d |  |
| 33 |  | Testar Funcionalidades | 2h | 2019-05-08 13:00 | 2019-05-08 15:00 | 32 | 18.79d |  |
| 34 |  | Refatoração do Código | 30min | 2019-05-08 15:00 | 2019-05-08 15:30 | 33 | 18.79d |  |
| 35 | 1.3.7.4 | **User Story 3 -> 8 - Form Gestao_Clientes** | 6.2d | 2019-05-08 15:30 | 2019-05-14 14:30 |  | 18.79d |  |
| 36 | 1.3.7.4.1 | **User Story 3 - Design do Form Gestao_Clientes** | 0.4d | 2019-05-08 15:30 | 2019-05-09 08:30 |  | 18.79d |  |
| 37 |  | Criação do Form | 30min | 2019-05-08 15:30 | 2019-05-08 16:00 | 29 | 18.79d |  |
| 38 |  | Implementação do UI | 1h | 2019-05-08 16:00 | 2019-05-08 17:00 | 37 | 21.19d |  |
| 39 |  | Implementar Butões Necessários | 30min | 2019-05-09 08:00 | 2019-05-09 08:30 | 38 | 21.19d |  |
| 40 | 1.3.7.4.2 | **User Story 4 - Adicionar Cliente** | 1d | 2019-05-09 08:30 | 2019-05-09 14:30 |  | 21.19d |  |
| 41 |  | Implementação do código | 1d | 2019-05-09 08:30 | 2019-05-09 14:30 | 36 | 21.19d |  |
| 42 | 1.3.7.4.3 | **User Story 5 - Editar Cliente** | 0.5d | 2019-05-09 14:30 | 2019-05-09 17:00 |  | 21.19d |  |
| 43 |  | Implementação do código | 0.5d | 2019-05-09 14:30 | 2019-05-09 17:00 | 41 | 21.19d |  |
| 44 | 1.3.7.4.4 | **User Story 6 - Eliminar Cliente** | 0.4d | 2019-05-10 08:00 | 2019-05-10 10:00 |  | 21.19d |  |
| 45 |  | Verificação se o user pretende apagar os dados selecionados | 30min | 2019-05-10 08:00 | 2019-05-10 08:30 | 43 | 21.19d |  |
| 46 |  | Implementação do código | 1.5h | 2019-05-10 08:30 | 2019-05-10 10:00 | 45 | 21.19d |  |
| 47 | 1.3.7.4.5 | **User Story 7 - Guardar Dados Cliente** | 1d | 2019-05-10 10:00 | 2019-05-10 16:00 |  | 21.19d |  |
| 48 |  | Implementar ficheiro binário para guardar dados | 5h | 2019-05-10 10:00 | 2019-05-10 16:00 | 36, 40, 42, 44 | 21.19d |  |
| 49 | 1.3.7.4.6 | **User Story 8 - Proteções e Correções de Erros** | 2.9d | 2019-05-10 16:00 | 2019-05-14 14:30 |  | 21.09d |  |
| 50 |  | Implementar proteções necessárias | 4h | 2019-05-10 16:00 | 2019-05-13 11:00 | 47 | 21.19d |  |
| 51 |  | Garantir que os dados criados no Form são guardados | 1h | 2019-05-13 11:30 | 2019-05-13 13:30 | 50 | 21.09d | start no earlier than 2019-05-13 11:30 |
| 52 |  | Testar Funcionalidades | 4h | 2019-05-13 13:30 | 2019-05-14 08:30 | 51 | 21.09d |  |
| 53 |  | Correção de Bugs/Erros | 3h | 2019-05-14 08:30 | 2019-05-14 11:30 | 52 | 21.09d |  |
| 54 |  | Refatoração do Código | 2h | 2019-05-14 11:30 | 2019-05-14 14:30 | 53 | 21.09d |  |
| 55 | 1.3.7.5 | **User Story 9-20 - Form Gestão_Vendas** | 7.9d | 2019-05-08 16:00 | 2019-05-15 15:30 |  | 18.59d |  |
| 56 | 1.3.7.5.1 | **User Story 9 - Design do Form Gestao_Vendas** | 0.4d | 2019-05-08 16:00 | 2019-05-09 09:00 |  | 18.79d |  |
| 57 |  | Criação do Form | 30min | 2019-05-08 16:00 | 2019-05-08 16:30 | 37, 29 | 18.79d |  |
| 58 |  | Implementação do UI | 1h | 2019-05-08 16:30 | 2019-05-09 08:30 | 57 | 18.79d |  |
| 59 |  | Implementar butões Necessários | 30min | 2019-05-09 08:30 | 2019-05-09 09:00 | 58 | 18.79d |  |
| 60 | 1.3.7.5.2 | **User Story 10 - Adicionar Carro Vendido** | 1d | 2019-05-09 09:00 | 2019-05-09 15:00 |  | 18.79d |  |
| 61 |  | Implementação do código | 5h | 2019-05-09 09:00 | 2019-05-09 15:00 | 56 | 18.79d |  |
| 62 | 1.3.7.5.3 | **User Story 11 - Editar Carro Vendido** | 0.8d | 2019-05-09 15:00 | 2019-05-10 10:00 |  | 18.79d |  |
| 63 |  | Implementação do código | 4h | 2019-05-09 15:00 | 2019-05-10 10:00 | 60 | 18.79d |  |
| 64 | 1.3.7.5.4 | **User Story 12 - Eliminar Carro Vendido** | 0.5d | 2019-05-10 10:00 | 2019-05-10 13:30 |  | 18.79d |  |
| 65 |  | Verificação se o user pretende apagar os dados selecionados | 30min | 2019-05-10 10:00 | 2019-05-10 10:30 | 62 | 18.79d |  |
| 66 |  | Implementação do código | 2h | 2019-05-10 10:30 | 2019-05-10 13:30 | 65 | 18.79d |  |
| 67 | 1.3.7.5.5 | **User Story 13 - Listar Carros Vendidos** | 0.2d | 2019-05-10 13:30 | 2019-05-10 14:30 |  | 18.79d |  |
| 68 |  | Implementação do código | 1h | 2019-05-10 13:30 | 2019-05-10 14:30 | 56, 60, 62, 64 | 18.79d |  |
| 69 | 1.3.7.5.6 | **User Story 14 - Listar Gastos e Total Gastos** | 0.2d | 2019-05-10 14:30 | 2019-05-10 15:30 |  | 18.79d |  |
| 70 |  | Implementação do código | 1h | 2019-05-10 14:30 | 2019-05-10 15:30 | 56, 60, 62, 64, 67 | 18.79d |  |

| ID | WBS | Task | Duration | Start | Finish | Predecessors | Total float | Constraint |
| --- | --- | --- | --- | --- | --- | --- | --- | --- |
| 71 | 1.3.7.5.7 | **User Story 15 - Listar Ganhos e Total Ganhos** | 0.2d | 2019-05-10 15:30 | 2019-05-10 16:30 |  | 18.79d |  |
| 72 |  | Implementação do código | 1h | 2019-05-10 15:30 | 2019-05-10 16:30 | 56, 60, 62, 64, 69 | 18.79d |  |
| 73 | 1.3.7.5.8 | **User Story 16 - Listar Margem Lucro e Total Lucro** | 0.2d | 2019-05-10 16:30 | 2019-05-13 08:30 |  | 18.79d |  |
| 74 |  | Implementação do código | 1h | 2019-05-10 16:30 | 2019-05-13 08:30 | 56, 60, 62, 64, 71 | 18.79d |  |
| 75 | 1.3.7.5.9 | **User Story 17 - Calcular Valor IVA** | 0.4d | 2019-05-13 08:30 | 2019-05-13 10:30 |  | 18.79d |  |
| 76 |  | Criação de metodo para realizar o calculo | 1.5h | 2019-05-13 08:30 | 2019-05-13 10:00 | 56, 60, 62, 64, 73 | 18.79d | start no earlier than 2019-05-13 08:30 |
| 77 |  | Implementação do código | 30min | 2019-05-13 10:00 | 2019-05-13 10:30 | 76 | 18.79d |  |
| 78 | 1.3.7.5.10 | **User Story 18 - Calcular Valor Desconto** | 0.4d | 2019-05-13 11:30 | 2019-05-13 14:30 |  | 18.59d |  |
| 79 |  | Criação de metodo para realizar o calculo | 1.5h | 2019-05-13 11:30 | 2019-05-13 14:00 | 56, 60, 62, 64, 75 | 18.59d | start no earlier than 2019-05-13 11:30 |
| 80 |  | Implementação do código | 30min | 2019-05-13 14:00 | 2019-05-13 14:30 | 79 | 18.59d |  |
| 81 | 1.3.7.5.11 | **User Story 19 - Calcular Valor Total Extras** | 0.4d | 2019-05-13 14:30 | 2019-05-13 16:30 |  | 18.59d |  |
| 82 |  | Criação de metodo para realizar o calculo | 1.5h | 2019-05-13 14:30 | 2019-05-13 16:00 | 56, 60, 62, 64, 67, 78 | 18.59d |  |
| 83 |  | Implementação do código | 30min | 2019-05-13 16:00 | 2019-05-13 16:30 | 82 | 18.59d |  |
| 84 | 1.3.7.5.12 | **User Story 20 - Proteções e Correções de Erros** | 3d | 2019-05-13 16:30 | 2019-05-15 15:30 |  | 18.59d |  |
| 85 |  | Garantir que os dados criados no Form são guardados | 1h | 2019-05-13 16:30 | 2019-05-14 08:30 | 56, 60, 62, 64, 67, 69, 71, 73, 75, 78, 81 | 18.59d |  |
| 86 |  | Garantir que os dados anteriores são carregados | 1h | 2019-05-14 08:30 | 2019-05-14 09:30 | 85 | 18.59d |  |
| 87 |  | Implementar proteções necessárias | 4h | 2019-05-14 09:30 | 2019-05-14 14:30 | 86 | 18.59d |  |
| 88 |  | Testar Funcionalidades | 4h | 2019-05-14 14:30 | 2019-05-15 09:30 | 87 | 18.59d |  |
| 89 |  | Correção de Bugs/Erros | 3h | 2019-05-15 09:30 | 2019-05-15 13:30 | 88 | 18.59d |  |
| 90 |  | Refatoração do Código | 2h | 2019-05-15 13:30 | 2019-05-15 15:30 | 89 | 18.59d |  |
| 91 |  | Revisão do Sprint | 2h | 2019-05-15 15:30 | 2019-05-16 08:30 | 84 | 18.59d |  |
| 92 |  | Retrospetiva do Sprint | 1h | 2019-05-16 08:30 | 2019-05-16 09:30 | 91 | 18.59d |  |
| 93 |  | Reunião Final Do Sprint | 30min | 2019-05-16 09:30 | 2019-05-16 10:00 | 92 | 18.59d |  |
| 94 |  | SPRINT 1 COMPLETO | 2min | 2019-05-16 10:00 | 2019-05-16 10:02 | 25, 26, 29, 35, 55, 91, 92, 93 | 18.59d |  |
| 95 | 1.3.8 | **Sprint 2 - Dia 27/05 até 19/06** | 11.41d | 2019-05-27 09:00 | 2019-06-05 10:02 |  |  |  |
| 96 |  | Planeamento da Sprint | 2h | 2019-05-27 09:00 | 2019-05-27 11:00 | 24 | 7.6d |  |
| 97 | 1.3.8.2 | **User Story 21 - 32 - Form Gestão_Oficina** | 8.9d | 2019-05-27 11:00 | 2019-06-03 16:30 |  | 7.6d |  |
| 98 | 1.3.8.2.1 | **User Story 21 - Design do Form Gestao_Vendas** | 0.4d | 2019-05-27 11:00 | 2019-05-27 14:00 |  | 7.6d |  |
| 99 |  | Criação do Form | 30min | 2019-05-27 11:00 | 2019-05-27 11:30 | 30, 37, 57, 96 | 7.6d |  |
| 100 |  | Implentação do UI | 1h | 2019-05-27 11:30 | 2019-05-27 13:30 | 99 | 7.6d |  |
| 101 |  | Implementar butões Necessários | 30min | 2019-05-27 13:30 | 2019-05-27 14:00 | 100 | 7.6d |  |
| 102 | 1.3.8.2.2 | **User Story 22 - Adicionar Carro de Oficina** | 0.8d | 2019-05-27 14:00 | 2019-05-28 09:00 |  | 7.6d |  |
| 103 |  | Implementação do código | 4h | 2019-05-27 14:00 | 2019-05-28 09:00 | 98 | 7.6d |  |
| 104 | 1.3.8.2.3 | **User Story 23 - Adicionar Serviços a um Carro** | 0.4d | 2019-05-28 09:00 | 2019-05-28 11:00 |  | 7.6d |  |
| 105 |  | Implementação do código | 2h | 2019-05-28 09:00 | 2019-05-28 11:00 | 102 | 7.6d |  |
| 106 | 1.3.8.2.4 | **User Story 24 - Adicionar Parcela a Serviço** | 0.4d | 2019-05-28 11:00 | 2019-05-28 14:00 |  | 7.6d |  |
| 107 |  | Implementação do código | 2h | 2019-05-28 11:00 | 2019-05-28 14:00 | 104 | 7.6d |  |
| 108 | 1.3.8.2.5 | **User Story 25- Apagar Carro de Oficina** | 0.5d | 2019-05-28 14:00 | 2019-05-28 16:30 |  | 7.6d |  |
| 109 |  | Verificação se o user pretende apagar os dados selecionados | 30min | 2019-05-28 14:00 | 2019-05-28 14:30 | 106 | 7.6d |  |
| 110 |  | Implementação do código | 2h | 2019-05-28 14:30 | 2019-05-28 16:30 | 109 | 7.6d |  |
| 111 | 1.3.8.2.6 | **User Story 26 - Eliminar Serviço do Carro** | 0.5d | 2019-05-28 16:30 | 2019-05-29 10:00 |  | 7.6d |  |
| 112 |  | Verificação se o user pretende apagar os dados selecionados | 30min | 2019-05-28 16:30 | 2019-05-28 17:00 | 108 | 7.6d |  |
| 113 |  | Implementação do código | 2h | 2019-05-29 08:00 | 2019-05-29 10:00 | 112 | 7.6d |  |
| 114 | 1.3.8.2.7 | **User Story 27 - Eliminar Parcela do Serviço** | 0.5d | 2019-05-29 10:00 | 2019-05-29 13:30 |  | 7.6d |  |
| 115 |  | Verificação se o user pretende apagar os dados selecionados | 30min | 2019-05-29 10:00 | 2019-05-29 10:30 | 111 | 7.6d |  |
| 116 |  | Implementação do código | 2h | 2019-05-29 10:30 | 2019-05-29 13:30 | 115 | 7.6d |  |
| 117 | 1.3.8.2.8 | **User Story 28 - Calcular Custo Total Carro** | 0.4d | 2019-05-29 13:30 | 2019-05-29 15:30 |  | 7.6d |  |
| 118 |  | Criação de metodo para realizar o calculo | 1.5h | 2019-05-29 13:30 | 2019-05-29 15:00 | 114 | 7.6d |  |
| 119 |  | Implementação do código | 30min | 2019-05-29 15:00 | 2019-05-29 15:30 | 118 | 7.6d |  |
| 120 | 1.3.8.2.9 | **User Story 29 - Calcular Custo Total Serviço** | 0.4d | 2019-05-29 15:30 | 2019-05-30 08:30 |  | 7.6d |  |
| 121 |  | Criação de metodo para realizar o calculo | 1.5h | 2019-05-29 15:30 | 2019-05-29 17:00 | 117 | 7.6d |  |
| 122 |  | Implementação do código | 30min | 2019-05-30 08:00 | 2019-05-30 08:30 | 121 | 7.6d |  |
| 123 | 1.3.8.2.10 | **User Story 30 - Calcular Custo Total Cliente** | 0.4d | 2019-05-30 08:30 | 2019-05-30 10:30 |  | 7.6d |  |
| 124 |  | Criação de metodo para realizar o calculo | 1.5h | 2019-05-30 08:30 | 2019-05-30 10:00 | 120 | 7.6d |  |
| 125 |  | Implementação do código | 30min | 2019-05-30 10:00 | 2019-05-30 10:30 | 124 | 7.6d |  |
| 126 | 1.3.8.2.11 | **User Story 31 - Emitir Fatura por Serviço** | 1.4d | 2019-05-30 10:30 | 2019-05-31 09:30 |  | 7.6d |  |
| 127 |  | Carregar todos os dados relativos ao serviço | 2h | 2019-05-30 10:30 | 2019-05-30 13:30 | 98, 102, 104, 106, 108, 114, 117, 120, 123 | 7.6d |  |
| 128 |  | Implementar código para emitir fatura | 5h | 2019-05-30 13:30 | 2019-05-31 09:30 | 127 | 7.6d |  |
| 129 | 1.3.8.2.12 | **User Story 32 - Proteções e Correções de Bugs** | 2.8d | 2019-05-31 09:30 | 2019-06-03 16:30 |  | 7.6d |  |
| 130 |  | Garantir que os dados anteriores são carregados | 1h | 2019-05-31 09:30 | 2019-05-31 10:30 | 126 | 7.6d |  |
| 131 |  | Garantir que os dados criados no Form são guardados | 1h | 2019-05-31 10:30 | 2019-05-31 11:30 | 130 | 7.6d |  |
| 132 |  | Implementar Proteções Necessárias | 4h | 2019-05-31 11:30 | 2019-05-31 16:30 | 131 | 7.6d |  |
| 133 |  | Testar Funcionalidades | 3h | 2019-05-31 16:30 | 2019-06-03 10:30 | 132 | 7.6d |  |
| 134 |  | Correção de Bugs/Erros | 3h | 2019-06-03 10:30 | 2019-06-03 14:30 | 133 | 7.6d |  |
| 135 |  | Refatoração do Código | 2h | 2019-06-03 14:30 | 2019-06-03 16:30 | 134 | 7.6d |  |
| 136 | 1.3.8.3 | **User Story 33 - 40 - Form Gestão_Aluguer** | 7.2d | 2019-05-27 11:30 | 2019-05-31 16:30 |  | 8.99d |  |
| 137 | 1.3.8.3.1 | **User Story 33 - Design form Gestao_Aluguer** | 0.4d | 2019-05-27 11:30 | 2019-05-27 14:30 |  | 8.99d |  |
| 138 |  | Criação do Form | 30min | 2019-05-27 11:30 | 2019-05-27 12:00 | 30, 37, 57, 99 | 8.99d |  |
| 139 |  | Implentação do UI | 1h | 2019-05-27 13:00 | 2019-05-27 14:00 | 138 | 8.99d |  |
| 140 |  | Implementar butões Necessários | 30min | 2019-05-27 14:00 | 2019-05-27 14:30 | 139 | 8.99d |  |

| ID | WBS | Task | Duration | Start | Finish | Predecessors | Total float | Constraint |
| --- | --- | --- | --- | --- | --- | --- | --- | --- |
| 141 | 1.3.8.3.2 | **User Story 34 - Adicionar Carro de Aluguer** | 0.8d | 2019-05-27 14:30 | 2019-05-28 09:30 |  | 8.99d |  |
| 142 |  | Implementação do código | 4h | 2019-05-27 14:30 | 2019-05-28 09:30 | 137 | 8.99d |  |
| 143 | 1.3.8.3.3 | **User Story 35 - Eliminar Carro de Aluguer** | 0.4d | 2019-05-28 09:30 | 2019-05-28 11:30 |  | 8.99d |  |
| 144 |  | Verificação se o user pretende apagar os dados selecionados | 30min | 2019-05-28 09:30 | 2019-05-28 10:00 | 141 | 8.99d |  |
| 145 |  | Implementação do código | 1.5h | 2019-05-28 10:00 | 2019-05-28 11:30 | 144 | 8.99d |  |
| 146 | 1.3.8.3.4 | **User Story 36 - Atribuir Carro de Aluguer a Cliente** | 0.6d | 2019-05-28 11:30 | 2019-05-28 15:30 |  | 8.99d |  |
| 147 |  | Implementação do código | 3h | 2019-05-28 11:30 | 2019-05-28 15:30 | 143 | 8.99d |  |
| 148 | 1.3.8.3.5 | **User Story 37 - Calcular Kilometros Percorridos** | 0.4d | 2019-05-28 15:30 | 2019-05-29 08:30 |  | 8.99d |  |
| 149 |  | Criação de metodo para realizar o calculo | 1.5h | 2019-05-28 15:30 | 2019-05-28 17:00 | 146 | 8.99d |  |
| 150 |  | Implementação do código | 30min | 2019-05-29 08:00 | 2019-05-29 08:30 | 149 | 8.99d |  |
| 151 | 1.3.8.3.6 | **User Story 38 - Calcular Valor a Pagar** | 0.4d | 2019-05-29 08:30 | 2019-05-29 10:30 |  | 8.99d |  |
| 152 |  | Criação de metodo para realizar o calculo | 1.5h | 2019-05-29 08:30 | 2019-05-29 10:00 | 148 | 8.99d |  |
| 153 |  | Implementação do código | 30min | 2019-05-29 10:00 | 2019-05-29 10:30 | 152 | 8.99d |  |
| 154 | 1.3.8.3.7 | **User Story 39 - Emitir Fatura de Aluguer** | 1.4d | 2019-05-29 10:30 | 2019-05-30 09:30 |  | 8.99d |  |
| 155 |  | Carregar todos os dados relativos ao Aluguer | 2h | 2019-05-29 10:30 | 2019-05-29 13:30 | 137, 141, 143, 146, 148, 151 | 8.99d |  |
| 156 |  | Implementar código para emitir fatura | 5h | 2019-05-29 13:30 | 2019-05-30 09:30 | 155 | 8.99d |  |
| 157 | 1.3.8.3.8 | **User Story 40- Proteções e Correções de Erros** | 2.8d | 2019-05-30 09:30 | 2019-05-31 16:30 |  | 8.99d |  |
| 158 |  | Garantir que os dados anteriores são carregados | 1h | 2019-05-30 09:30 | 2019-05-30 10:30 | 154 | 8.99d |  |
| 159 |  | Garantir que os dados criados no Form são guardados | 1h | 2019-05-30 10:30 | 2019-05-30 11:30 | 158 | 8.99d |  |
| 160 |  | Implementar Proteções Necessárias | 4h | 2019-05-30 11:30 | 2019-05-30 16:30 | 159 | 8.99d |  |
| 161 |  | Testar Funcionalidades | 3h | 2019-05-30 16:30 | 2019-05-31 10:30 | 160 | 8.99d |  |
| 162 |  | Correção de Bugs/Erros | 3h | 2019-05-31 10:30 | 2019-05-31 14:30 | 161 | 8.99d |  |
| 163 |  | Refatoração do Código | 2h | 2019-05-31 14:30 | 2019-05-31 16:30 | 162 | 8.99d |  |
| 164 |  | Revisão do Sprint | 2h | 2019-06-04 08:00 | 2019-06-04 10:00 | 137, 141, 143, 146, 148, 151, 154, 157 | 7.29d | start no earlier than 2019-06-04 08:00 |
| 165 |  | Retrospetiva do Sprint | 1h | 2019-06-04 10:00 | 2019-06-04 11:00 | 164 | 7.29d |  |
| 166 |  | Reunião Final Do Sprint | 30min | 2019-06-04 11:00 | 2019-06-04 11:30 | 165 | 7.29d |  |
| 167 |  | SPRINT 2 COMPLETO | 2min | 2019-06-04 11:30 | 2019-06-04 11:32 | 166 | 7.29d |  |
| 168 | 1.4 | **Conclusão do Projeto** | 0.5d | 2019-06-05 10:02 | 2019-06-05 13:32 |  | 5.49d |  |
| 169 |  | Reunião Final Projeto | 2h | 2019-06-05 10:02 | 2019-06-05 13:02 | 24, 95 | 5.49d |  |
| 170 |  | Conclusões sobre os Erros Cometidos | 30min | 2019-06-05 13:02 | 2019-06-05 13:32 | 169 | 5.49d |  |
| 171 |  | Projeto Concluido | 2min | 2019-06-11 08:00 | 2019-06-11 08:02 | 2, 4, 17, 168 | 0d |  |

## Version 2 (data date 2019-06-17, saved 2019-06-17)

Note of the change: Diagrama de classes done i think (projeto updated i think)

Last finish stays 2019-06-11. Complete tasks 0 → 101.

Changed:

| ID | Task | Start | Finish | Duration | Complete | Total float |
| --- | --- | --- | --- | --- | --- | --- |
| 1 | **Projeto MDS** | 2019-04-29 08:00 A |  |  | 0% → 99% |  |
| 2 | **Inicio Projeto** | 2019-04-29 08:00 A | 2019-04-29 08:30 A |  | 0% → 100% | 43.67d → none |
| 3 | Reunião Inicial | 2019-04-29 08:00 A | 2019-04-29 08:30 A |  | 0% → 100% | 43.67d → none |
| 4 | **Planeamento Projeto** | 2019-04-29 08:30 A | 2019-05-02 14:40 A |  | 0% → 100% | 43.67d → none |
| 5 | **Build Backlog** | 2019-04-29 08:30 A | 2019-04-29 16:00 A |  | 0% → 100% | 43.67d → none |
| 6 | Determinar Requerimentos do Cliente | 2019-04-29 08:30 A | 2019-04-29 09:00 A |  | 0% → 100% | 43.67d → none |
| 7 | Criar User Stories | 2019-04-29 09:00 A | 2019-04-29 14:00 A |  | 0% → 100% | 43.67d → none |
| 8 | Priorizar convenientemente User Stories | 2019-04-29 14:00 A | 2019-04-29 16:00 A |  | 0% → 100% | 43.67d → none |
| 9 | Definir o numero de Sprints | 2019-04-29 16:00 A | 2019-04-29 16:10 A |  | 0% → 100% | 43.67d → none |
| 10 | Definir Plano de Comunicação | 2019-04-29 16:10 A | 2019-04-29 16:25 A |  | 0% → 100% | 43.67d → none |
| 11 | Definir Metodologias de trabalho | 2019-04-29 16:25 A | 2019-04-29 16:55 A |  | 0% → 100% | 43.67d → none |
| 12 | Identificação dos Riscos do Projeto | 2019-04-29 16:55 A | 2019-04-30 08:40 A |  | 0% → 100% | 43.67d → none |
| 13 | Analise dos Riscos do Projeto | 2019-04-30 08:40 A | 2019-04-30 09:10 A |  | 0% → 100% | 43.67d → none |
| 14 | Possiveis soluções para os Riscos do Projeto | 2019-04-30 09:10 A | 2019-04-30 09:40 A |  | 0% → 100% | 43.67d → none |
| 15 | Relatorio de Planeamento | 2019-04-30 09:40 A | 2019-05-02 14:40 A |  | 0% → 100% | 43.67d → none |
| 16 | Relatorio de Especificacao de Requisitos | 2019-04-30 09:40 A | 2019-05-02 14:40 A |  | 0% → 100% | 43.67d → none |
| 17 | **Build Phase** | 2019-05-06 09:00 A |  |  | 0% → 99% |  |
| 18 | Weekly Scrum 1 | 2019-05-06 09:00 A | 2019-05-06 09:30 A |  | 0% → 100% | 18.79d → none |
| 19 | Weekly Scrum 2 | 2019-05-13 11:00 A | 2019-05-13 11:30 A |  | 0% → 100% | 32.51d → none |
| 20 | Weekly Scrum 3 | 2019-05-20 08:00 A | 2019-05-20 08:30 A |  | 0% → 100% | 25.21d → none |
| 21 | Weekly Scrum 4 | 2019-05-27 08:00 A | 2019-05-27 08:30 A |  | 0% → 100% | 17.31d → none |
| 22 | Weekly Scrum 5 | 2019-06-03 08:00 A | 2019-06-03 08:30 A |  | 0% → 100% | 9.41d → none |
| 23 | Weekly Scrum 6 | 2019-06-10 08:00 A | 2019-06-10 08:30 A |  | 0% → 100% | 1.51d → none |
| 24 | **Sprint 1 - Dia 05/05 até 27/05** | 2019-05-06 09:30 → 2019-05-06 09:00 A | 2019-05-16 10:02 → 2019-05-15 08:02 (-1d) | 12.91d → 11.01d | 0% → 99% | 18.59d → 30.4d |
| 25 | Planeamento da Sprint | 2019-05-06 09:30 A | 2019-05-06 11:30 A |  | 0% → 100% | 18.79d → none |
| 26 | **User Story 1 - Entity Framework** | 2019-05-06 11:30 A | 2019-05-07 14:30 A |  | 0% → 100% | 18.79d → none |
| 27 | Criação das Classes com a Entity Framework | 2019-05-06 11:30 A | 2019-05-07 11:00 A |  | 0% → 100% | 18.79d → none |
| 28 | Ligação das Classes entre Si | 2019-05-07 11:00 A | 2019-05-07 14:30 A |  | 0% → 100% | 18.79d → none |
| 29 | **User Story 2 - Form Menu_Inicial** | 2019-05-07 14:30 A | 2019-05-08 15:30 A |  | 0% → 100% | 18.79d → none |
| 30 | Criação do Form | 2019-05-07 14:30 A | 2019-05-07 15:00 A |  | 0% → 100% | 18.79d → none |
| 31 | Criação do UI | 2019-05-07 15:00 A | 2019-05-07 16:00 A |  | 0% → 100% | 18.79d → none |
| 32 | Implementar Codigo Necessário Para Transição de Forms | 2019-05-07 16:00 A | 2019-05-08 12:00 A |  | 0% → 100% | 18.79d → none |
| 33 | Testar Funcionalidades | 2019-05-08 13:00 A | 2019-05-08 15:00 A |  | 0% → 100% | 18.79d → none |
| 34 | Refatoração do Código | 2019-05-08 15:00 A | 2019-05-08 15:30 A |  | 0% → 100% | 18.79d → none |
| 35 | **User Story 3 -> 8 - Form Gestao_Clientes** | 2019-05-08 15:30 A | 2019-05-14 14:30 A |  | 0% → 100% | 18.79d → none |
| 36 | **User Story 3 - Design do Form Gestao_Clientes** | 2019-05-08 15:30 A | 2019-05-09 08:30 A |  | 0% → 100% | 18.79d → none |
| 37 | Criação do Form | 2019-05-08 15:30 A | 2019-05-08 16:00 A |  | 0% → 100% | 18.79d → none |
| 38 | Implementação do UI | 2019-05-08 16:00 A | 2019-05-08 17:00 A |  | 0% → 100% | 21.19d → none |
| 39 | Implementar Butões Necessários | 2019-05-09 08:00 A | 2019-05-09 08:30 A |  | 0% → 100% | 21.19d → none |
| 40 | **User Story 4 - Adicionar Cliente** | 2019-05-09 08:30 A | 2019-05-09 14:30 A |  | 0% → 100% | 21.19d → none |
| 41 | Implementação do código | 2019-05-09 08:30 A | 2019-05-09 14:30 A |  | 0% → 100% | 21.19d → none |
| 42 | **User Story 5 - Editar Cliente** | 2019-05-09 14:30 A | 2019-05-09 17:00 A |  | 0% → 100% | 21.19d → none |
| 43 | Implementação do código | 2019-05-09 14:30 A | 2019-05-09 17:00 A |  | 0% → 100% | 21.19d → none |
| 44 | **User Story 6 - Eliminar Cliente** | 2019-05-10 08:00 A | 2019-05-10 10:00 A |  | 0% → 100% | 21.19d → none |
| 45 | Verificação se o user pretende apagar os dados selecionados | 2019-05-10 08:00 A | 2019-05-10 08:30 A |  | 0% → 100% | 21.19d → none |
| 46 | Implementação do código | 2019-05-10 08:30 A | 2019-05-10 10:00 A |  | 0% → 100% | 21.19d → none |
| 47 | **User Story 7 - Guardar Dados Cliente** | 2019-05-10 10:00 A | 2019-05-10 16:00 A |  | 0% → 100% | 21.19d → none |
| 48 | Implementar ficheiro binário para guardar dados | 2019-05-10 10:00 A | 2019-05-10 16:00 A |  | 0% → 100% | 21.19d → none |
| 49 | **User Story 8 - Proteções e Correções de Erros** | 2019-05-10 16:00 A | 2019-05-14 14:30 A |  | 0% → 100% | 21.09d → none |
| 50 | Implementar proteções necessárias | 2019-05-10 16:00 A | 2019-05-13 11:00 A |  | 0% → 100% | 21.19d → none |
| 51 | Garantir que os dados criados no Form são guardados | 2019-05-13 11:30 A | 2019-05-13 13:30 A |  | 0% → 100% | 21.09d → none |
| 52 | Testar Funcionalidades | 2019-05-13 13:30 A | 2019-05-14 08:30 A |  | 0% → 100% | 21.09d → none |
| 53 | Correção de Bugs/Erros | 2019-05-14 08:30 A | 2019-05-14 11:30 A |  | 0% → 100% | 21.09d → none |
| 54 | Refatoração do Código | 2019-05-14 11:30 A | 2019-05-14 14:30 A |  | 0% → 100% | 21.09d → none |
| 55 | **User Story 9-20 - Form Gestão_Vendas** | 2019-05-08 16:00 → 2019-05-06 09:00 A (-2d) | 2019-05-15 15:30 → 2019-05-14 13:30 (-1d) | 7.9d → 10.3d | 0% → 99% | 18.59d → 31.11d |
| 56 | **User Story 9 - Design do Form Gestao_Vendas** | 2019-05-08 16:00 A | 2019-05-09 09:00 A |  | 0% → 100% | 18.79d → none |
| 57 | Criação do Form | 2019-05-08 16:00 A | 2019-05-08 16:30 A |  | 0% → 100% | 18.79d → none |
| 58 | Implementação do UI | 2019-05-08 16:30 A | 2019-05-09 08:30 A |  | 0% → 100% | 18.79d → none |
| 59 | Implementar butões Necessários | 2019-05-09 08:30 A | 2019-05-09 09:00 A |  | 0% → 100% | 18.79d → none |
| 60 | **User Story 10 - Adicionar Carro Vendido** | 2019-05-09 09:00 A | 2019-05-09 15:00 A |  | 0% → 100% | 18.79d → none |
| 61 | Implementação do código | 2019-05-09 09:00 A | 2019-05-09 15:00 A |  | 0% → 100% | 18.79d → none |
| 62 | **User Story 11 - Editar Carro Vendido** | 2019-05-09 15:00 → 2019-05-06 09:00 (-3d) | 2019-05-10 10:00 → 2019-05-06 09:00 (-4d) | 0.8d → 0d |  | 18.79d → 41.41d |
| 64 | **User Story 12 - Eliminar Carro Vendido** | 2019-05-10 10:00 A | 2019-05-10 13:30 A |  | 0% → 100% | 18.79d → none |
| 65 | Verificação se o user pretende apagar os dados selecionados | 2019-05-10 10:00 A | 2019-05-10 10:30 A |  | 0% → 100% | 18.79d → none |
| 66 | Implementação do código | 2019-05-10 10:30 A | 2019-05-10 13:30 A |  | 0% → 100% | 18.79d → none |
| 67 | **User Story 13 - Listar Carros Vendidos** | 2019-05-10 13:30 A | 2019-05-10 14:30 A |  | 0% → 100% | 18.79d → none |
| 68 | Implementação do código | 2019-05-10 13:30 A | 2019-05-10 14:30 A |  | 0% → 100% | 18.79d → none |
| 69 | **User Story 14 - Listar Gastos e Total Gastos** | 2019-05-10 14:30 → 2019-05-06 09:00 (-4d) | 2019-05-10 15:30 → 2019-05-06 09:00 (-4d) | 0.2d → 0d |  | 18.79d → 41.41d |
| 71 | **User Story 15 - Listar Ganhos e Total Ganhos** | 2019-05-10 15:30 → 2019-05-06 09:00 (-4d) | 2019-05-10 16:30 → 2019-05-06 09:00 (-4d) | 0.2d → 0d |  | 18.79d → 41.41d |
| 72 | Implementação do código | 2019-05-10 15:30 → 2019-05-10 13:30 | 2019-05-10 16:30 → 2019-05-10 14:30 |  |  | 18.79d → 34.11d |

| ID | Task | Start | Finish | Duration | Complete | Total float |
| --- | --- | --- | --- | --- | --- | --- |
| 73 | **User Story 16 - Listar Margem Lucro e Total Lucro** | 2019-05-10 16:30 → 2019-05-06 09:00 (-4d) | 2019-05-13 08:30 → 2019-05-06 09:00 (-7d) | 0.2d → 0d |  | 18.79d → 41.41d |
| 74 | Implementação do código | 2019-05-10 16:30 → 2019-05-10 13:30 | 2019-05-13 08:30 → 2019-05-10 14:30 (-3d) |  |  | 18.79d → 34.11d |
| 75 | **User Story 17 - Calcular Valor IVA** | 2019-05-13 08:30 → 2019-05-06 09:00 (-7d) | 2019-05-13 10:30 → 2019-05-06 09:00 (-7d) | 0.4d → 0d |  | 18.79d → 41.41d |
| 78 | **User Story 18 - Calcular Valor Desconto** | 2019-05-13 11:30 → 2019-05-06 09:00 (-7d) | 2019-05-13 14:30 → 2019-05-06 09:00 (-7d) | 0.4d → 0d |  | 18.59d → 41.41d |
| 81 | **User Story 19 - Calcular Valor Total Extras** | 2019-05-13 14:30 → 2019-05-06 09:00 (-7d) | 2019-05-13 16:30 → 2019-05-06 09:00 (-7d) | 0.4d → 0d |  | 18.59d → 41.41d |
| 82 | Criação de metodo para realizar o calculo | 2019-05-13 14:30 → 2019-05-10 14:30 (-3d) | 2019-05-13 16:00 → 2019-05-10 16:00 (-3d) |  |  | 18.59d → 33.71d |
| 83 | Implementação do código | 2019-05-13 16:00 → 2019-05-10 16:00 (-3d) | 2019-05-13 16:30 → 2019-05-10 16:30 (-3d) |  |  | 18.59d → 33.71d |
| 84 | **User Story 20 - Proteções e Correções de Erros** | 2019-05-13 16:30 → 2019-05-10 14:30 A (-3d) | 2019-05-15 15:30 → 2019-05-14 13:30 A (-1d) |  | 0% → 100% | 18.59d → none |
| 85 | Garantir que os dados criados no Form são guardados | 2019-05-13 16:30 → 2019-05-10 14:30 A (-3d) | 2019-05-14 08:30 → 2019-05-10 15:30 A (-4d) |  | 0% → 100% | 18.59d → none |
| 86 | Garantir que os dados anteriores são carregados | 2019-05-14 08:30 → 2019-05-10 15:30 A (-4d) | 2019-05-14 09:30 → 2019-05-10 16:30 A (-4d) |  | 0% → 100% | 18.59d → none |
| 87 | Implementar proteções necessárias | 2019-05-14 09:30 → 2019-05-10 16:30 A (-4d) | 2019-05-14 14:30 → 2019-05-13 11:30 A (-1d) |  | 0% → 100% | 18.59d → none |
| 88 | Testar Funcionalidades | 2019-05-14 14:30 → 2019-05-13 11:30 A (-1d) | 2019-05-15 09:30 → 2019-05-13 16:30 A (-2d) |  | 0% → 100% | 18.59d → none |
| 89 | Correção de Bugs/Erros | 2019-05-15 09:30 → 2019-05-13 16:30 A (-2d) | 2019-05-15 13:30 → 2019-05-14 10:30 A (-1d) |  | 0% → 100% | 18.59d → none |
| 90 | Refatoração do Código | 2019-05-15 13:30 → 2019-05-14 10:30 A (-1d) | 2019-05-15 15:30 → 2019-05-14 13:30 A (-1d) |  | 0% → 100% | 18.59d → none |
| 91 | Revisão do Sprint | 2019-05-15 15:30 → 2019-05-14 13:30 A (-1d) | 2019-05-16 08:30 → 2019-05-14 15:30 A (-2d) |  | 0% → 100% | 18.59d → none |
| 92 | Retrospetiva do Sprint | 2019-05-16 08:30 → 2019-05-14 15:30 A (-2d) | 2019-05-16 09:30 → 2019-05-14 16:30 A (-2d) |  | 0% → 100% | 18.59d → none |
| 93 | Reunião Final Do Sprint | 2019-05-16 09:30 → 2019-05-14 16:30 A (-2d) | 2019-05-16 10:00 → 2019-05-14 17:00 A (-2d) |  | 0% → 100% | 18.59d → none |
| 94 | SPRINT 1 COMPLETO | 2019-05-16 10:00 → 2019-05-15 08:00 A (-1d) | 2019-05-16 10:02 → 2019-05-15 08:02 A (-1d) |  | 0% → 100% | 18.59d → none |
| 95 | **Sprint 2 - Dia 27/05 até 19/06** | 2019-05-27 09:00 A |  |  | 0% → 99% |  |
| 96 | Planeamento da Sprint | 2019-05-27 09:00 A | 2019-05-27 11:00 A |  | 0% → 100% | 7.6d → none |
| 97 | **User Story 21 - 32 - Form Gestão_Oficina** | 2019-05-27 11:00 → 2019-05-27 09:00 A | 2019-06-03 16:30 → 2019-06-03 09:30 | 8.9d → 8.1d | 0% → 99% | 7.6d → 9.31d |
| 98 | **User Story 21 - Design do Form Gestao_Vendas** | 2019-05-27 11:00 A | 2019-05-27 14:00 A |  | 0% → 100% | 7.6d → none |
| 99 | Criação do Form | 2019-05-27 11:00 A | 2019-05-27 11:30 A |  | 0% → 100% | 7.6d → none |
| 100 | Implentação do UI | 2019-05-27 11:30 A | 2019-05-27 13:30 A |  | 0% → 100% | 7.6d → none |
| 101 | Implementar butões Necessários | 2019-05-27 13:30 A | 2019-05-27 14:00 A |  | 0% → 100% | 7.6d → none |
| 102 | **User Story 22 - Adicionar Carro de Oficina** | 2019-05-27 14:00 A | 2019-05-28 09:00 A |  | 0% → 100% | 7.6d → none |
| 103 | Implementação do código | 2019-05-27 14:00 A | 2019-05-28 09:00 A |  | 0% → 100% | 7.6d → none |
| 104 | **User Story 23 - Adicionar Serviços a um Carro** | 2019-05-28 09:00 A | 2019-05-28 11:00 A |  | 0% → 100% | 7.6d → none |
| 105 | Implementação do código | 2019-05-28 09:00 A | 2019-05-28 11:00 A |  | 0% → 100% | 7.6d → none |
| 106 | **User Story 24 - Adicionar Parcela a Serviço** | 2019-05-28 11:00 A | 2019-05-28 14:00 A |  | 0% → 100% | 7.6d → none |
| 107 | Implementação do código | 2019-05-28 11:00 A | 2019-05-28 14:00 A |  | 0% → 100% | 7.6d → none |
| 108 | **User Story 25- Apagar Carro de Oficina** | 2019-05-28 14:00 A | 2019-05-28 16:30 A |  | 0% → 100% | 7.6d → none |
| 109 | Verificação se o user pretende apagar os dados selecionados | 2019-05-28 14:00 A | 2019-05-28 14:30 A |  | 0% → 100% | 7.6d → none |
| 110 | Implementação do código | 2019-05-28 14:30 A | 2019-05-28 16:30 A |  | 0% → 100% | 7.6d → none |
| 111 | **User Story 26 - Eliminar Serviço do Carro** | 2019-05-28 16:30 A | 2019-05-29 10:00 A |  | 0% → 100% | 7.6d → none |
| 112 | Verificação se o user pretende apagar os dados selecionados | 2019-05-28 16:30 A | 2019-05-28 17:00 A |  | 0% → 100% | 7.6d → none |
| 113 | Implementação do código | 2019-05-29 08:00 A | 2019-05-29 10:00 A |  | 0% → 100% | 7.6d → none |
| 114 | **User Story 27 - Eliminar Parcela do Serviço** | 2019-05-29 10:00 A | 2019-05-29 13:30 A |  | 0% → 100% | 7.6d → none |
| 115 | Verificação se o user pretende apagar os dados selecionados | 2019-05-29 10:00 A | 2019-05-29 10:30 A |  | 0% → 100% | 7.6d → none |
| 116 | Implementação do código | 2019-05-29 10:30 A | 2019-05-29 13:30 A |  | 0% → 100% | 7.6d → none |
| 117 | **User Story 28 - Calcular Custo Total Carro** | 2019-05-29 13:30 → 2019-05-27 09:00 (-2d) | 2019-05-29 15:30 → 2019-05-27 09:00 (-2d) | 0.4d → 0d |  | 7.6d → 17.41d |
| 120 | **User Story 29 - Calcular Custo Total Serviço** | 2019-05-29 15:30 → 2019-05-27 09:00 (-2d) | 2019-05-30 08:30 → 2019-05-27 09:00 (-3d) | 0.4d → 0d |  | 7.6d → 17.41d |
| 121 | Criação de metodo para realizar o calculo | 2019-05-29 15:30 → 2019-05-27 09:00 (-2d) | 2019-05-29 17:00 → 2019-05-27 10:30 (-2d) |  |  | 7.6d → 17.01d |
| 122 | Implementação do código | 2019-05-30 08:00 → 2019-05-27 10:30 (-3d) | 2019-05-30 08:30 → 2019-05-27 11:00 (-3d) |  |  | 7.6d → 17.01d |
| 123 | **User Story 30 - Calcular Custo Total Cliente** | 2019-05-30 08:30 → 2019-05-27 09:00 (-3d) | 2019-05-30 10:30 → 2019-05-27 09:00 (-3d) | 0.4d → 0d |  | 7.6d → 17.41d |
| 124 | Criação de metodo para realizar o calculo | 2019-05-30 08:30 → 2019-05-27 09:00 (-3d) | 2019-05-30 10:00 → 2019-05-27 10:30 (-3d) |  |  | 7.6d → 17.01d |
| 125 | Implementação do código | 2019-05-30 10:00 → 2019-05-27 10:30 (-3d) | 2019-05-30 10:30 → 2019-05-27 11:00 (-3d) |  |  | 7.6d → 17.01d |
| 126 | **User Story 31 - Emitir Fatura por Serviço** | 2019-05-30 10:30 → 2019-05-29 13:30 A (-1d) | 2019-05-31 09:30 → 2019-05-30 11:30 A (-1d) |  | 0% → 100% | 7.6d → none |
| 127 | Carregar todos os dados relativos ao serviço | 2019-05-30 10:30 → 2019-05-29 13:30 A (-1d) | 2019-05-30 13:30 → 2019-05-29 15:30 A (-1d) |  | 0% → 100% | 7.6d → none |
| 128 | Implementar código para emitir fatura | 2019-05-30 13:30 → 2019-05-29 15:30 A (-1d) | 2019-05-31 09:30 → 2019-05-30 11:30 A (-1d) |  | 0% → 100% | 7.6d → none |
| 129 | **User Story 32 - Proteções e Correções de Bugs** | 2019-05-31 09:30 → 2019-05-30 11:30 A (-1d) | 2019-06-03 16:30 → 2019-06-03 09:30 A |  | 0% → 100% | 7.6d → none |
| 130 | Garantir que os dados anteriores são carregados | 2019-05-31 09:30 → 2019-05-30 11:30 A (-1d) | 2019-05-31 10:30 → 2019-05-30 13:30 A (-1d) |  | 0% → 100% | 7.6d → none |
| 131 | Garantir que os dados criados no Form são guardados | 2019-05-31 10:30 → 2019-05-30 13:30 A (-1d) | 2019-05-31 11:30 → 2019-05-30 14:30 A (-1d) |  | 0% → 100% | 7.6d → none |
| 132 | Implementar Proteções Necessárias | 2019-05-31 11:30 → 2019-05-30 14:30 A (-1d) | 2019-05-31 16:30 → 2019-05-31 09:30 A |  | 0% → 100% | 7.6d → none |
| 133 | Testar Funcionalidades | 2019-05-31 16:30 → 2019-05-31 09:30 A | 2019-06-03 10:30 → 2019-05-31 13:30 A (-3d) |  | 0% → 100% | 7.6d → none |
| 134 | Correção de Bugs/Erros | 2019-06-03 10:30 → 2019-05-31 13:30 A (-3d) | 2019-06-03 14:30 → 2019-05-31 16:30 A (-3d) |  | 0% → 100% | 7.6d → none |
| 135 | Refatoração do Código | 2019-06-03 14:30 → 2019-05-31 16:30 A (-3d) | 2019-06-03 16:30 → 2019-06-03 09:30 A |  | 0% → 100% | 7.6d → none |
| 136 | **User Story 33 - 40 - Form Gestão_Aluguer** | 2019-05-27 11:30 → 2019-05-27 09:00 A | 2019-05-31 16:30 → 2019-05-31 14:30 | 7.2d → 7.3d | 0% → 99% | 8.99d → 10.11d |
| 137 | **User Story 33 - Design form Gestao_Aluguer** | 2019-05-27 11:30 A | 2019-05-27 14:30 A |  | 0% → 100% | 8.99d → none |
| 138 | Criação do Form | 2019-05-27 11:30 A | 2019-05-27 12:00 A |  | 0% → 100% | 8.99d → none |
| 139 | Implentação do UI | 2019-05-27 13:00 A | 2019-05-27 14:00 A |  | 0% → 100% | 8.99d → none |
| 140 | Implementar butões Necessários | 2019-05-27 14:00 A | 2019-05-27 14:30 A |  | 0% → 100% | 8.99d → none |
| 141 | **User Story 34 - Adicionar Carro de Aluguer** | 2019-05-27 14:30 A | 2019-05-28 09:30 A |  | 0% → 100% | 8.99d → none |
| 142 | Implementação do código | 2019-05-27 14:30 A | 2019-05-28 09:30 A |  | 0% → 100% | 8.99d → none |
| 143 | **User Story 35 - Eliminar Carro de Aluguer** | 2019-05-28 09:30 A | 2019-05-28 11:30 A |  | 0% → 100% | 8.99d → none |
| 144 | Verificação se o user pretende apagar os dados selecionados | 2019-05-28 09:30 A | 2019-05-28 10:00 A |  | 0% → 100% | 8.99d → none |
| 145 | Implementação do código | 2019-05-28 10:00 A | 2019-05-28 11:30 A |  | 0% → 100% | 8.99d → none |
| 146 | **User Story 36 - Atribuir Carro de Aluguer a Cliente** | 2019-05-28 11:30 A | 2019-05-28 15:30 A |  | 0% → 100% | 8.99d → none |
| 147 | Implementação do código | 2019-05-28 11:30 A | 2019-05-28 15:30 A |  | 0% → 100% | 8.99d → none |
| 148 | **User Story 37 - Calcular Kilometros Percorridos** | 2019-05-28 15:30 A | 2019-05-29 08:30 A |  | 0% → 100% | 8.99d → none |

| ID | Task | Start | Finish | Duration | Complete | Total float |
| --- | --- | --- | --- | --- | --- | --- |
| 149 | Criação de metodo para realizar o calculo | 2019-05-28 15:30 A | 2019-05-28 17:00 A |  | 0% → 100% | 8.99d → none |
| 150 | Implementação do código | 2019-05-29 08:00 A | 2019-05-29 08:30 A |  | 0% → 100% | 8.99d → none |
| 151 | **User Story 38 - Calcular Valor a Pagar** | 2019-05-29 08:30 → 2019-05-27 09:00 (-2d) | 2019-05-29 10:30 → 2019-05-27 09:00 (-2d) | 0.4d → 0d |  | 8.99d → 17.41d |
| 154 | **User Story 39 - Emitir Fatura de Aluguer** | 2019-05-29 10:30 → 2019-05-29 08:30 A | 2019-05-30 09:30 → 2019-05-29 16:30 A (-1d) |  | 0% → 100% | 8.99d → none |
| 155 | Carregar todos os dados relativos ao Aluguer | 2019-05-29 10:30 → 2019-05-29 08:30 A | 2019-05-29 13:30 → 2019-05-29 10:30 A |  | 0% → 100% | 8.99d → none |
| 156 | Implementar código para emitir fatura | 2019-05-29 13:30 → 2019-05-29 10:30 A | 2019-05-30 09:30 → 2019-05-29 16:30 A (-1d) |  | 0% → 100% | 8.99d → none |
| 157 | **User Story 40- Proteções e Correções de Erros** | 2019-05-30 09:30 → 2019-05-29 16:30 A (-1d) | 2019-05-31 16:30 → 2019-05-31 14:30 A |  | 0% → 100% | 8.99d → none |
| 158 | Garantir que os dados anteriores são carregados | 2019-05-30 09:30 → 2019-05-29 16:30 A (-1d) | 2019-05-30 10:30 → 2019-05-30 08:30 A |  | 0% → 100% | 8.99d → none |
| 159 | Garantir que os dados criados no Form são guardados | 2019-05-30 10:30 → 2019-05-30 08:30 A | 2019-05-30 11:30 → 2019-05-30 09:30 A |  | 0% → 100% | 8.99d → none |
| 160 | Implementar Proteções Necessárias | 2019-05-30 11:30 → 2019-05-30 09:30 A | 2019-05-30 16:30 → 2019-05-30 14:30 A |  | 0% → 100% | 8.99d → none |
| 161 | Testar Funcionalidades | 2019-05-30 16:30 → 2019-05-30 14:30 A | 2019-05-31 10:30 → 2019-05-31 08:30 A |  | 0% → 100% | 8.99d → none |
| 162 | Correção de Bugs/Erros | 2019-05-31 10:30 → 2019-05-31 08:30 A | 2019-05-31 14:30 → 2019-05-31 11:30 A |  | 0% → 100% | 8.99d → none |
| 163 | Refatoração do Código | 2019-05-31 14:30 → 2019-05-31 11:30 A | 2019-05-31 16:30 → 2019-05-31 14:30 A |  | 0% → 100% | 8.99d → none |
| 164 | Revisão do Sprint | 2019-06-04 08:00 A | 2019-06-04 10:00 A |  | 0% → 100% | 7.29d → none |
| 165 | Retrospetiva do Sprint | 2019-06-04 10:00 A | 2019-06-04 11:00 A |  | 0% → 100% | 7.29d → none |
| 166 | Reunião Final Do Sprint | 2019-06-04 11:00 A | 2019-06-04 11:30 A |  | 0% → 100% | 7.29d → none |
| 167 | SPRINT 2 COMPLETO | 2019-06-04 11:30 A | 2019-06-04 11:32 A |  | 0% → 100% | 7.29d → none |
| 168 | **Conclusão do Projeto** | 2019-06-05 10:02 A | 2019-06-05 13:32 A |  | 0% → 100% | 5.49d → none |
| 169 | Reunião Final Projeto | 2019-06-05 10:02 A | 2019-06-05 13:02 A |  | 0% → 100% | 5.49d → none |
| 170 | Conclusões sobre os Erros Cometidos | 2019-06-05 13:02 A | 2019-06-05 13:32 A |  | 0% → 100% | 5.49d → none |
| 171 | Projeto Concluido | 2019-06-11 08:00 A | 2019-06-11 08:02 A |  | 0% → 100% | 0d → none |
